# Go Paperless

Schedule from MS Project, 2015-02-09 to 2015-04-29, status date 2015-02-11, A marks actual dates.

## Calendars

- Standard: Mon-Fri 08:00-12:00, 13:00-17:00; Sat-Sun off.

## Resources

| Resource |
| --- |
| Anwer Amin |
| Imad Ali |
| Tanzeel |
| im |

## Schedule

| ID | WBS | Task | Duration | Start | Finish | Predecessors | Complete | Remaining | Total slack | Free slack | Resources | Work | Actual work |
| --- | --- | --- | --- | --- | --- | --- | --- | --- | --- | --- | --- | --- | --- |
| 1 | 1 | **Go Paperless** | 58d | 2015-02-09 A | 2015-04-29 |  | 4% | 55.66d | 0d |  |  | 1432h | 86.4h |
| 2 | 1.1 | **Research & planning** | 4d | 2015-02-09 A | 2015-02-12 |  | 83% | 0.7d | 38.33d |  |  | 80h | 74.4h |
| 3 | 1.1.1 | Requriements Gathering | 2d | 2015-02-09 A | 2015-02-10 A |  | 100% |  |  |  | Anwer Amin; Imad Ali; Tanzeel | 48h | 48h |
| 4 | 1.1.2 | Requirement Discusstion | 1d | 2015-02-11 A | 2015-02-11 A | 3 | 100% |  |  |  | Tanzeel; Imad Ali; Anwer Amin | 24h | 24h |
| 5 | 1.1.3 | Task Size Estimation and plan | 1d | 2015-02-12 A | 2015-02-12 | 4 | 30% | 0.7d | 38.33d |  | Anwer Amin | 8h | 2.4h |
| 6 | 1.2 | **Solution design** | 7d | 2015-02-09 | 2015-02-17 |  |  |  | 1.08d |  |  | 136h |  |
| 7 | 1.2.1 | Website Structure Decisions | 2d | 2015-02-09 | 2015-02-10 |  |  |  | 1.08d | 0d | Imad Ali; Anwer Amin; Tanzeel | 48h |  |
| 8 | 1.2.2 | Functionl specification | 1d | 2015-02-11 | 2015-02-11 | 7 |  |  | 1.08d | 0d | Imad Ali; Anwer Amin | 16h |  |
| 9 | 1.2.3 | User work Flow | 3d | 2015-02-12 | 2015-02-16 | 8 |  |  | 38.33d |  | Imad Ali; Anwer Amin; Tanzeel | 72h |  |
| 10 | 1.2.4 | Use Cases(stories) | 2d | 2015-02-12 | 2015-02-13 | 7, 8 |  |  | 1.08d | 0d |  |  |  |
| 11 | 1.2.5 | SRS | 2d | 2015-02-16 | 2015-02-17 | 10 |  |  | 1.08d | 0d |  |  |  |
| 12 | 1.3 | **System Design** | 6d | 2015-02-18 A | 2015-02-25 | 11 | 10% | 5.4d | 29.33d |  |  | 80h | 9.6h |
| 13 | 1.3.1 | DataBase Design | 2d | 2015-02-18 A | 2015-02-19 |  | 30% | 1.4d | 10.33d | 0d | Anwer Amin; Imad Ali | 32h | 9.6h |
| 14 | 1.3.2 | Object design | 2d | 2015-02-20 | 2015-02-23 | 13 |  |  | 31.33d |  | Anwer Amin; Imad Ali | 32h |  |
| 15 | 1.3.3 | Table to Json | 2d | 2015-02-24 | 2015-02-25 | 13FS+2d |  |  | 32.33d |  | Imad Ali | 16h |  |
| 16 | 1.4 | **Ui & UX Design** | 8d | 2015-02-27 A | 2015-03-10 | 11FS+7d | 1% | 7.92d | 0d |  |  | 136h | 2.4h |
| 17 | 1.4.1 | Initial Design Decision | 1d | 2015-02-27 A | 2015-02-27 |  | 10% | 0.9d | 0d |  | Imad Ali; Tanzeel; Anwer Amin | 24h | 2.4h |
| 18 | 1.4.2 | HomePage Design | 4d | 2015-03-02 | 2015-03-05 | 17 |  |  | 0d |  | Anwer Amin; Imad Ali | 64h |  |
| 19 | 1.4.3 | Content Page | 2d | 2015-03-06 | 2015-03-09 | 18 |  |  | 1d |  | Imad Ali | 16h |  |
| 20 | 1.4.4 | Form Builder Design | 2d | 2015-03-06 | 2015-03-09 | 18 |  |  | 0d |  | Anwer Amin | 16h |  |
| 21 | 1.4.5 | Form field decision | 1d | 2015-03-10 | 2015-03-10 | 20, 13 |  |  | 0d |  | Imad Ali; Anwer Amin | 16h |  |
| 22 | 1.5 | **Front-End Development** | 24d | 2015-03-11 | 2015-04-13 | 16 |  |  | 0d |  |  | 504h |  |
| 23 | 1.5.1 | Templete(s) for Main Website | 3d | 2015-03-11 | 2015-03-13 |  |  |  | 6d | 0d | Anwer Amin; Imad Ali | 48h |  |
| 24 | 1.5.2 | Dashboard | 3d | 2015-03-11 | 2015-03-13 |  |  |  | 0d |  | Imad Ali | 24h |  |
| 25 | 1.5.3 | Jquery and Ajax code | 4d | 2015-03-16 | 2015-03-19 | 24 |  |  | 0d |  | Imad Ali; Anwer Amin | 64h |  |
| 26 | 1.5.4 | Form Builder Code | 8d | 2015-03-20 | 2015-03-31 | 25 |  |  | 0d |  | Imad Ali; Anwer Amin; Tanzeel | 192h |  |
| 27 | 1.5.5 | Field Logic | 3d | 2015-04-01 | 2015-04-03 | 26 |  |  | 6d | 0d | Anwer Amin; Imad Ali | 48h |  |
| 28 | 1.5.6 | Responsive Design | 6d | 2015-04-06 | 2015-04-13 | 27 |  |  | 12d |  | Imad Ali | 48h |  |
| 29 | 1.5.7 | Form Templetes | 5d | 2015-03-16 | 2015-03-20 | 24 |  |  | 28d |  | Anwer Amin; Imad Ali | 80h |  |

Notes:
- 15: check ways on how with should b documented ????
- 16: Work may take less time if we use a templete. / Consult with team
- 26: Very high priority... whole project depending on this task ...

| ID | WBS | Task | Duration | Start | Finish | Predecessors | Total slack | Free slack | Resources | Work |
| --- | --- | --- | --- | --- | --- | --- | --- | --- | --- | --- |
| 30 | 1.6 | **Back-End Development** | 29d | 2015-03-16 | 2015-04-23 | 23 | 0d |  |  | 432h |
| 31 | 1.6.1 | Build Database | 3d | 2015-03-16 | 2015-03-18 | 13 | 1d | 0d | Anwer Amin | 24h |
| 32 | 1.6.2 | JSP Pages | 8d | 2015-03-19 | 2015-03-30 | 23, 24, 31 | 1d | 0d | Anwer Amin; Imad Ali | 128h |
| 33 | 1.6.3 | Form Object Handler | 9d | 2015-04-01 | 2015-04-13 | 32, 31, 26 | 0d |  | Tanzeel; Anwer Amin; Imad Ali | 216h |
| 34 | 1.6.4 | Notification System | 8d | 2015-04-14 | 2015-04-23 | 13, 33 | 0d |  | Imad Ali | 64h |
| 35 | 1.7 | **Testing** | 22d | 2015-03-31 | 2015-04-29 |  | 0d |  |  | 64h |
| 36 | 1.7.1 | Website testing | 2d | 2015-03-31 | 2015-04-01 | 32 | 18d |  |  |  |
| 37 | 1.7.2 | Form Builder Testing | 2d | 2015-04-01 | 2015-04-02 | 26 | 8d |  |  |  |
| 38 | 1.7.3 | Notification System Testing | 1d | 2015-04-24 | 2015-04-24 | 34 | 0d |  |  |  |
| 39 | 1.7.4 | Documentation testing | 4d | 2015-04-24 | 2015-04-29 | 36SS, 37SS, 38SS | 0d |  | Anwer Amin; Tanzeel | 64h |
